# Projeto Integrador

Schedule from MS Project, 2024-07-01 to 2025-12-09, costs in R$.

## Calendars

- Padrão: Mon-Fri 09:00-12:00, 13:00-18:00; Sat-Sun off.

## Resources

| Resource | Rate | Cost per use |
| --- | --- | --- |
| Gerente de marketing | 35 |  |
| Social media | 12.5 |  |
| Analista de métricas | 12.5 |  |
| CEO |  |  |
| Vendas | 25 |  |
| Gerente de desenvolvimento | 35 |  |
| Gerente de operação | 35 |  |
| Gerente mercadológico | 35 |  |
| Gerente administrativo | 35 |  |
| Auxiliar administrativo | 10 |  |
| Financeiro | 17 |  |
| Experiencia do usuário | 10 |  |
| Jurídico |  | 5000 |
| Desenvolvedor | 70 |  |
| QA | 17 |  |
| Cientista de dados | 35 |  |
| Analista de suporte | 17.5 |  |
| Auxiliar de suporte | 17.5 |  |
| Analista de produto | 20 |  |
| Estagiário | 7 |  |
| Contabilidade |  | 3000 |
| Construtora |  | 20000 |
| Infraestutura |  | 15000 |

## Schedule

| ID | WBS | Task | Duration | Start | Finish | Predecessors | Total slack | Free slack | Constraint | Resources | Work | Cost |
| --- | --- | --- | --- | --- | --- | --- | --- | --- | --- | --- | --- | --- |
| 1 | 1 | **Planejamento Inicial** | 37d | 2024-07-01 | 2024-08-20 |  | 15d | 0d |  |  | 296h |  |
| 2 | 1.1 | **Definição da Visão e Missão da Empresa** | 4d | 2024-07-01 | 2024-07-04 |  | 15d | 0d |  |  | 32h |  |
| 3 | 1.1.1 | Estabelecimento da missão | 2d | 2024-07-01 | 2024-07-02 |  | 15d | 0d | start no earlier than 2024-07-01 | CEO | 16h |  |
| 4 | 1.1.2 | Reunião inicial com os fundadores para alinhar objetivos e expectativas | 2d | 2024-07-03 | 2024-07-04 | 3 | 15d |  | start no earlier than 2024-07-01 | CEO | 16h |  |
| 5 | 1.2 | **Análise de Mercado** | 10d | 2024-07-05 | 2024-07-18 | 2 | 15d | 0d |  |  | 80h |  |
| 6 | 1.2.1 | Pesquisa de mercado para identificar concorrentes e oportunidades | 7d | 2024-07-05 | 2024-07-15 |  | 15d | 0d |  | CEO | 56h |  |
| 7 | 1.2.2 | Análise SWOT (Forças/Fraquezas/Oportunidades/Ameaças) | 3d | 2024-07-16 | 2024-07-18 | 6 | 15d |  |  | CEO | 24h |  |
| 8 | 1.3 | **Plano de Negócios** | 23d | 2024-07-19 | 2024-08-20 | 5 | 15d |  |  |  | 184h |  |
| 9 | 1.3.1 | Desenvolvimento do plano de negócios completo | 15d | 2024-07-19 | 2024-08-08 |  | 15d | 0d |  | CEO | 120h |  |
| 10 | 1.3.2 | Definição de metas | 3d | 2024-08-09 | 2024-08-13 | 9 | 15d | 0d | start no earlier than 2024-07-17 | CEO | 24h |  |
| 11 | 1.3.3 | Projeções financeiras e plano de captação de recursos | 5d | 2024-08-14 | 2024-08-20 | 10 | 15d |  | start no earlier than 2024-07-20 | CEO | 40h |  |
| 12 | 2 | **Estruturação Jurídica e Administrativa** | 81d | 2024-08-21 | 2024-12-11 | 1 | 15d | 0d |  |  | 1136h | 28,000 |
| 13 | 2.1 | **Registro da Empresa** | 81d | 2024-08-21 | 2024-12-11 |  | 15d |  |  |  | 648h | 3,000 |
| 14 | 2.1.1 | Escolha e registro do nome da empresa | 1d | 2024-08-21 | 2024-08-21 | 1 | 15d | 0d |  | CEO | 8h |  |
| 15 | 2.1.2 | Obtenção de CNPJ e registros necessários | 80d | 2024-08-22 | 2024-12-11 | 14 | 15d |  |  | Contabilidade | 640h | 3,000 |
| 16 | 2.2 | **Locação do Imóvel** | 61d | 2024-08-22 | 2024-11-14 |  | 34d |  |  |  | 488h | 25,000 |
| 17 | 2.2.1 | Pesquisa e visita a imóveis comerciais | 15d | 2024-08-22 | 2024-09-11 | 14 | 34d | 0d |  | CEO | 120h |  |
| 18 | 2.2.2 | Negociação e assinatura do contrato de locação | 1d | 2024-09-12 | 2024-09-12 | 17 | 34d | 0d |  | Jurídico | 8h | 5,000 |
| 19 | 2.2.3 | Adequação do imóvel conforme as necessidades (reformas/mobília/etc) | 45d | 2024-09-13 | 2024-11-14 | 18 | 34d |  |  | Construtora | 360h | 20,000 |
| 20 | 3 | **Infraestrutura e Equipamentos** | 85d | 2024-09-13 | 2025-01-09 |  | 238d |  |  |  | 680h | 49,000 |
| 21 | 3.1 | **Compra de Equipamentos** | 50d | 2024-09-13 | 2024-11-21 |  | 238d |  |  |  | 400h | 14,000 |
| 22 | 3.1.1 | Orçamento | 5d | 2024-09-13 | 2024-09-19 | 18 | 238d | 0d |  | Gerente de desenvolvimento | 40h | 1,400 |
| 23 | 3.1.2 | Aquisição de ativos (computadores/móveis/etc) | 45d | 2024-09-20 | 2024-11-21 | 22 | 238d | 0d |  | Gerente de operação | 360h | 12,600 |
| 24 | 3.2 | **Configuração do Espaço de Trabalho** | 35d | 2024-11-22 | 2025-01-09 |  | 238d |  |  |  | 280h | 35,000 |
| 25 | 3.2.1 | Organização e instalação do escritório | 15d | 2024-11-22 | 2024-12-12 | 23 | 238d | 0d |  | Construtora | 120h | 20,000 |
| 26 | 3.2.2 | Instalação de infraestrutura de TI (rede/internet/servidores/ambiente dev) | 20d | 2024-12-13 | 2025-01-09 | 25 | 238d |  |  | Infraestutura | 160h | 15,000 |

| ID | WBS | Task | Duration | Start | Finish | Predecessors | Total slack | Free slack | Resources | Work | Cost |
| --- | --- | --- | --- | --- | --- | --- | --- | --- | --- | --- | --- |
| 27 | 4 | **Recrutamento e Seleção de Funcionários** | 38d | 2024-12-12 | 2025-02-03 | 12 | 15d | 0d |  | 352h | 10,640 |
| 28 | 4.1 | **Definição de Perfis e Cargos** | 6d | 2024-12-12 | 2024-12-19 |  | 15d |  |  | 96h | 1,680 |
| 29 | 4.1.1 | Descrição de cargos e responsabilidades | 5d | 2024-12-12 | 2024-12-18 |  | 15d | 0d | CEO; Gerente administrativo | 80h | 1,400 |
| 30 | 4.1.2 | Planejamento do organograma da empresa | 1d | 2024-12-19 | 2024-12-19 | 29 | 47d |  | CEO; Gerente administrativo | 16h | 280 |
| 31 | 4.2 | **Processo de Recrutamento** | 33d | 2024-12-19 | 2025-02-03 |  | 15d |  |  | 256h | 8,960 |
| 32 | 4.2.1 | Divulgação das vagas em plataformas de emprego | 2d | 2024-12-19 | 2024-12-20 | 29 | 15d | 0d | Gerente de desenvolvimento | 16h | 560 |
| 33 | 4.2.2 | Seleção e entrevistas com candidatos | 15d | 2024-12-23 | 2025-01-13 | 32 | 15d | 0d | Gerente administrativo | 120h | 4,200 |
| 34 | 4.2.3 | Contratação e onboard dos funcionários | 15d | 2025-01-14 | 2025-02-03 | 33 | 15d |  | Gerente administrativo | 120h | 4,200 |
| 35 | 5 | **Desenvolvimento do Software** | 173d | 2025-02-04 | 2025-10-02 | 27 | 0d |  |  | 5344h | 150,096 |
| 36 | 5.1 | **Iniciação do projeto** | 13d | 2025-02-04 | 2025-02-20 |  | 15d | 0d |  | 208h | 5,608 |
| 37 | 5.1.1 | Reuniões com stakeholders | 1d | 2025-02-04 | 2025-02-04 |  | 15d | 0d | Gerente mercadológico; Desenvolvedor | 16h | 840 |
| 38 | 5.1.2 | Documentação dos requisitos iniciais | 3d | 2025-02-05 | 2025-02-07 | 37 | 15d | 0d | Analista de produto | 24h | 480 |
| 39 | 5.1.3 | Escolha das tecnologias e ferramentas a serem utilizadas | 4d | 2025-02-10 | 2025-02-13 | 38 | 15d | 0d | Cientista de dados; Desenvolvedor; Experiencia do usuário; Gerente de desenvolvimento; QA | 120h | 4,008 |
| 40 | 5.1.4 | Designação de papéis e responsabilidades | 1d | 2025-02-14 | 2025-02-14 | 39 | 19d |  | Gerente de desenvolvimento | 8h | 280 |
| 41 | 5.1.5 | Aprovação do orçamento | 5d | 2025-02-14 | 2025-02-20 | 39 | 15d |  | CEO | 40h |  |
| 42 | 5.2 | **Planejamento do Desenvolvimento** | 37d | 2025-02-21 | 2025-04-14 |  | 0d |  |  | 712h | 21,128 |
| 43 | 5.2.1 | **Análise de requisitos** | 30d | 2025-02-21 | 2025-04-03 | 36 | 0d |  |  | 480h | 13,200 |
| 44 | 5.2.1.1 | Levantamento detalhado de requisitos | 15d | 2025-02-21 | 2025-03-13 |  | 15d |  | Analista de produto; Gerente mercadológico | 240h | 6,600 |
| 45 | 5.2.1.2 | Documentação de processos de negócios | 15d | 2025-03-14 | 2025-04-03 |  | 0d |  | Analista de produto; Gerente mercadológico | 240h | 6,600 |
| 46 | 5.2.2 | **Planejamento do cronograma** | 5d | 2025-04-04 | 2025-04-10 |  | 2d |  |  | 112h | 3,728 |
| 47 | 5.2.2.1 | Definição das fases e marcos do projeto | 2d | 2025-04-04 | 2025-04-07 | 43 | 2d | 0d | Gerente de desenvolvimento | 16h | 560 |
| 48 | 5.2.2.2 | Estimativa de tempo para cada atividade | 3d | 2025-04-08 | 2025-04-10 | 47 | 2d |  | Cientista de dados; Desenvolvedor; Experiencia do usuário; QA | 96h | 3,168 |
| 49 | 5.2.3 | **Análise de riscos** | 7d | 2025-04-04 | 2025-04-14 |  | 0d |  |  | 120h | 4,200 |
| 50 | 5.2.3.1 | Identificação de potenciais riscos | 4d | 2025-04-04 | 2025-04-09 | 43 | 0d |  | Gerente de desenvolvimento; Gerente de operação; Gerente mercadológico | 48h | 1,680 |
| 51 | 5.2.3.2 | Desenvolvimento de planos de mitigação | 3d | 2025-04-10 | 2025-04-14 | 50 | 0d |  | Gerente de desenvolvimento; Gerente de operação; Gerente mercadológico | 72h | 2,520 |

| ID | WBS | Task | Duration | Start | Finish | Predecessors | Total slack | Free slack | Resources | Work | Cost |
| --- | --- | --- | --- | --- | --- | --- | --- | --- | --- | --- | --- |
| 52 | 5.3 | **Design e Blueprint** | 33d | 2025-04-15 | 2025-05-29 |  | 0d |  |  | 1144h | 30,480 |
| 53 | 5.3.1 | Pesquisa e contratação de empresa de comunicação visual | 3d | 2025-04-15 | 2025-04-17 | 42 | 0d |  | Gerente de desenvolvimento | 24h | 840 |
| 54 | 5.3.2 | Criação de wireframes e protótipos do aplicativo | 20d | 2025-04-18 | 2025-05-15 | 53 | 0d |  | Cientista de dados; Desenvolvedor; Experiencia do usuário; QA; Estagiário | 800h | 22,240 |
| 55 | 5.3.3 | Validação do design com potenciais usuários | 10d | 2025-05-16 | 2025-05-29 | 54 | 0d |  | Experiencia do usuário | 80h | 800 |
| 56 | 5.3.4 | Desenvolvimento do blueprint funcional | 15d | 2025-04-15 | 2025-05-05 | 42 | 18d |  | Analista de produto; Gerente mercadológico | 240h | 6,600 |
| 57 | 5.4 | **Desenvolvimento do MVP (Produto Mínimo Viável)** | 90d | 2025-05-30 | 2025-10-02 |  | 0d |  |  | 3280h | 92,880 |
| 58 | 5.4.1 | Implementação das funcionalidades essenciais do aplicativo beta | 70d | 2025-05-30 | 2025-09-04 | 52 | 5d | 0d | Cientista de dados; Desenvolvedor; Experiencia do usuário; QA; Estagiário | 2800h | 77,840 |
| 59 | 5.4.2 | Testes iniciais e correção de bugs | 15d | 2025-09-05 | 2025-09-25 | 58 | 5d |  | Desenvolvedor; QA; Estagiário | 360h | 11,280 |
| 60 | 5.4.3 | Entrega de documentação final do projeto | 5d | 2025-09-26 | 2025-10-02 | 52 | 0d |  | Desenvolvedor; QA; Estagiário | 120h | 3,760 |
| 61 | 6 | **Testes e Ajustes Finais** | 22d | 2025-10-03 | 2025-11-03 | 57 | 26d |  |  | 576h | 17,760 |
| 62 | 6.1 | **Testes Internos** | 10d | 2025-10-03 | 2025-10-16 |  | 38d |  |  | 200h | 5,960 |
| 63 | 6.1.1 | Realização de testes internos com a equipe | 5d | 2025-10-03 | 2025-10-09 |  | 38d | 0d | Analista de produto; Gerente mercadológico | 80h | 2,200 |
| 64 | 6.1.2 | Ajustes com base no feedback | 5d | 2025-10-10 | 2025-10-16 | 63 | 38d |  | Desenvolvedor; QA; Estagiário | 120h | 3,760 |
| 65 | 6.2 | **Testes com Usuários** | 22d | 2025-10-03 | 2025-11-03 |  | 26d |  |  | 376h | 11,800 |
| 66 | 6.2.1 | Seleção de um grupo de usuários para testes beta | 2d | 2025-10-03 | 2025-10-06 | 35 | 26d | 0d | Experiencia do usuário | 16h | 160 |
| 67 | 6.2.2 | Coleta de feedback e ajustes finais | 20d | 2025-10-07 | 2025-11-03 | 66 | 26d |  | Desenvolvedor; Experiencia do usuário; QA | 360h | 11,640 |
| 68 | 7 | **Marketing e Lançamento** | 48d | 2025-10-03 | 2025-12-09 |  | 0d |  |  | 1040h | 24,820 |
| 69 | 7.1 | Plano de Marketing | 15d | 2025-10-03 | 2025-10-23 | 57 | 0d |  | Analista de métricas; Gerente de marketing; Social media; Vendas | 480h | 10,200 |
| 70 | 7.2 | Lançamento | 3d | 2025-10-24 | 2025-10-28 | 69 | 0d |  | Gerente de marketing; Social media; Vendas | 72h | 1,740 |
| 71 | 7.3 | Acompanhamento Go Live | 30d | 2025-10-29 | 2025-12-09 | 70 | 0d |  | Analista de suporte; Gerente de operação | 480h | 12,600 |
| 72 | 7.4 | Desmobilização da equipe | 1d | 2025-10-29 | 2025-10-29 | 70 | 29d |  | Gerente administrativo | 8h | 280 |
